Schedule from MS Project, 2020-04-20 to 2020-09-04, costs in ¥.

## Calendars

- 标准: Mon-Fri 08:00-12:00, 13:00-17:00; Sat-Sun off.

## Resources

| Resource | Rate |
| --- | --- |
| Amanda | 100 |
| Spencer | 100 |
| Justin | 100 |
| Purdy | 100 |
| Gavin | 100 |
| Daisy | 100 |
| Tom | 100 |
| Belinda | 100 |

## Schedule

| ID | Task | Duration | Start | Finish | Predecessors | Total slack | Free slack | Constraint | Resources | Work | Cost |
| --- | --- | --- | --- | --- | --- | --- | --- | --- | --- | --- | --- |
| 1 | loE/P/1 specify overall design | 34d | 2020-04-20 | 2020-06-04 |  | 0d |  | start no earlier than 2020-04-20 | Amanda | 272h | 27,200 |
| 2 | loE/P/2 specify module A | 20d | 2020-06-05 | 2020-07-02 | 1 | 0d |  |  | Daisy | 160h | 16,000 |
| 3 | loE/P/3 specify module B | 15d | 2020-06-05 | 2020-06-25 | 1 | 5d |  |  | Belinda | 120h | 12,000 |
| 4 | loE/P/5 specify module D | 15d | 2020-06-05 | 2020-06-25 | 1 | 5d |  |  | Tom | 120h | 12,000 |
| 5 | loE/P/4 specify module C | 25d | 2020-06-26 | 2020-07-30 | 1FS+15d | 0d |  |  | Belinda | 200h | 20,000 |
| 6 | loE/P/6 check specifications | 2d | 2020-07-03 | 2020-07-06 | 2, 3, 4 | 0d |  |  | Amanda | 16h | 1,600 |
| 7 | loE/P/6a check spec C | 1d | 2020-07-31 | 2020-07-31 | 5 | 0d |  |  | Amanda | 8h | 800 |
| 8 | loE/P/7 design module A | 7d | 2020-07-07 | 2020-07-15 | 6 | 1d | 0d |  | Daisy | 56h | 5,600 |
| 9 | loE/P/8 design module B | 6d | 2020-07-13 | 2020-07-20 | 6FS+4d | 0d |  |  | Tom | 48h | 4,800 |
| 10 | loE/P/10 design module D | 4d | 2020-07-07 | 2020-07-10 | 6 | 9d | 0d |  | Tom | 32h | 3,200 |
| 11 | loE/P/9 design module C | 4d | 2020-08-03 | 2020-08-06 | 7 | 0d |  |  | Belinda | 32h | 3,200 |
| 12 | loE/P/11 code/test module A | 30d | 2020-07-16 | 2020-08-26 | 8 | 1d |  |  | Gavin | 240h | 24,000 |
| 13 | loE/P/12 code/test module B | 28d | 2020-07-21 | 2020-08-27 | 9 | 0d |  |  | Purdy | 224h | 22,400 |
| 14 | loE/P/14 code/test module D | 25d | 2020-07-13 | 2020-08-14 | 10 | 9d |  |  | Spencer | 200h | 20,000 |
| 15 | loE/P/13 code/test module C | 15d | 2020-08-07 | 2020-08-27 | 11 | 0d |  |  | Justin | 120h | 12,000 |
| 16 | loE/P/15 system integration | 6d | 2020-08-28 | 2020-09-04 | 12, 13, 14, 15 | 0d |  |  | Belinda | 48h | 4,800 |
